# スケジュール_TWLSystemMenu

Schedule from MS Project, 2008-02-08 to 2008-06-26, A marks actual dates.
莉ｻ螟ｩ蝣よｪ蠑丈ｼ夂､ｾ

## Calendars

- 標準: Mon-Fri 08:00-12:00, 13:00-17:00; Sat-Sun off.

## Resources

| Resource | Group |
| --- | --- |
| 宮本昌幸 | RED |
| 大江徹 | RED |
| 中島高伸 | RED |
| 吉岡照幸 | RED |
| 村上豊 | RED |
| 白井達広 | RED |
| 神川洋司 | RED |
| 佐藤雅樹 | RED |
| 三田健太朗 | RED |
| 水口裕基 | RED |
| 赤羽淳平 | RED |
| 西川猛司 | RED |
| 吉田光寿 | RED |
| 喜友名毅 | RED-HARD |
| 安達 洋明 | PSEG1 |
| 稲葉 公崇 | PSEG1 |
| 大島 洋一 | PSEG1 |
| 岡島 学 | PSEG1 |
| 奥畑 亮馬 | PSEG1 |
| 北瀬 裕丈 | PSEG1 |
| 白川 英一 | PSEG1 |
| 清木 昌 | PSEG1 |
| 照井 章生 | PSEG1 |
| 徳永 英治 | PSEG1 |
| 西本 隆 | PSEG1 |
| 橋本 英之 | PSEG1 |
| 畠本 稔 | PSEG1 |
| 廣瀬 和樹 | PSEG1 |
| 安本 吉孝 | PSEG1 |
| 矢田 裕人 | PSEG1 |
| 吉崎 浩二 | PSEG1 |
| Atheros | Atheros |
| BroadOn | BroadOn |
| 遠藤高志 | PSEG2 |
| 松島愛佑 | ＵＩＧ |
| 荒木 勉 | ＵＩＧ |
| 川瀬 智広 | ＵＩＧ |
| 河野裕之 | ＵＩＧ |
| 小野沢祐貴 | ＵＩＧ |
| ネットワーク開発部 | ネ開 |
| 斉藤潤一 | RED-HARD |
| 藤田僚平 |  |
| 総務部 |  |
| 和田 |  |
| 中谷 |  |
| 知財部 |  |
| 桑原雅人 | RED-HARD |

## Schedule

| ID | WBS | Task | Type | Duration | Start | Finish | Total slack | Free slack | Constraint | Resources | Work |
| --- | --- | --- | --- | --- | --- | --- | --- | --- | --- | --- | --- |
| 1 | 1 | TS3(20台)先行納品開始 | milestone | 1d? | 2008-02-13 | 2008-02-13 | 96d |  | start no earlier than 2008-02-13 |  |  |
| 2 | 2 | ワーキングモデル(10台 0x01=7台, 0x10=3台)納品予定 | milestone | 1d? | 2008-02-15 | 2008-02-15 | 94d |  | start no earlier than 2008-02-15 |  |  |
| 3 | 3 | IS-TWL-DEBUGGER(5台)先行納品開始 | milestone | 1d? | 2008-03-03 | 2008-03-03 | 83d |  | start no earlier than 2008-03-03 |  |  |
| 4 | 4 | TS3（380台)納品開始 | milestone | 1d? | 2008-03-13 | 2008-03-13 | 75d |  | start no earlier than 2008-03-13 |  |  |
| 5 | 5 | ミニ量産試作(200台) | milestone | 3d? | 2008-02-26 | 2008-02-28 | 85d |  | finish no earlier than 2008-02-28 |  |  |
| 6 | 6 | IS-TWL-CAPTURE試作品納品開始 | milestone | 1d? | 2008-04-01 | 2008-04-01 | 62d |  | start no earlier than 2008-04-01 |  |  |
| 7 | 7 | IS-TWL-DEBUGGER(100台) | milestone | 13d? | 2008-04-14 | 2008-04-30 | 41d | 0d | finish no earlier than 2008-04-30 |  |  |
| 8 | 8 | 量産試作1(600台) | milestone | 5d? | 2008-04-21 | 2008-04-25 | 44d |  | finish no earlier than 2008-04-25 |  |  |
| 9 | 9 | IS-TWL-DEBUGGER(200台) | milestone | 12d? | 2008-05-01 | 2008-05-16 | 29d |  | finish no earlier than 2008-05-16 |  |  |
| 10 | 10 | IS-TWL-DEBUUGER(300台) | milestone | 1d? | 2008-05-20 | 2008-05-20 | 27d |  | start no earlier than 2008-05-20 |  |  |
| 11 | 11 | 量産試作2(600台) | milestone | 6d? | 2008-05-23 | 2008-05-30 | 19d |  | finish no earlier than 2008-05-30 |  |  |
| 12 | 12 | IS-TWL-DEBUGGER(月産500台) | milestone | 1d? | 2008-06-02 | 2008-06-02 | 18d |  | start no earlier than 2008-06-02 |  |  |
| 13 | 13 | 量産試作3(600台) | milestone | 5d? | 2008-06-20 | 2008-06-26 | 0d |  | finish no earlier than 2008-06-26 |  |  |
| 15 | 14 | REDランチャー開発 第１ステップ | milestone | 1d? | 2008-03-03 | 2008-03-03 | 83d |  | start no earlier than 2008-03-03 |  |  |
| 16 | 15 | REDランチャー開発 第２ステップ | milestone | 1d? | 2008-03-14 | 2008-03-14 | 74d |  | start no earlier than 2008-03-14 |  |  |
| 18 | 16 | 無線モジュール（ファームロード対応版）受領 |  | 1d? | 2008-02-08 | 2008-02-08 | 99d |  |  |  |  |
| 20 | 17 | **UIGシステムメニュー** |  | 1d? | 2008-02-08 | 2008-02-08 | 99d |  |  |  | 88h |
| 21 | 17.1 | 仕様策定 |  | 1d? | 2008-02-08 | 2008-02-08 | 99d |  |  | 松島愛佑 | 8h |
| 22 | 17.2 | フォント |  | 1d? | 2008-02-08 | 2008-02-08 | 99d |  |  |  |  |
| 23 | 17.3 | ランチャー |  | 1d? | 2008-02-08 | 2008-02-08 | 99d |  |  | 川瀬 智広; 荒木 勉 | 16h |
| 24 | 17.4 | 本体設定 |  | 1d? | 2008-02-08 | 2008-02-08 | 99d |  |  | 小野沢祐貴 | 8h |
| 25 | 17.5 | ショップ |  | 0.5d? | 2008-02-08 | 2008-02-08 | 99.5d |  |  | 中谷; 和田 | 8h |
| 26 | 17.6 | 写真帳 |  | 1d? | 2008-02-08 | 2008-02-08 | 99d |  |  | 河野裕之 | 8h |
| 27 | 17.7 | ピクトチャット |  | 1d? | 2008-02-08 | 2008-02-08 | 99d |  |  | 川瀬 智広; 荒木 勉 | 16h |
| 28 | 17.8 | DSダウンロードプレイ |  | 1d? | 2008-02-08 | 2008-02-08 | 99d |  |  | 川瀬 智広; 荒木 勉 | 16h |
| 29 | 17.9 | 新型配信システム |  | 1d? | 2008-02-08 | 2008-02-08 | 99d |  |  | ネットワーク開発部 | 8h |
| 31 | 18 | NANDファーム |  | 1d? | 2008-02-08 | 2008-02-08 | 99d |  |  | 村上豊 | 8h |

| ID | WBS | Task | Duration | Start | Finish | Complete | Remaining | Total slack | Free slack | Constraint | Resources | Work | Actual work |
| --- | --- | --- | --- | --- | --- | --- | --- | --- | --- | --- | --- | --- | --- |
| 33 | 19 | **仕様策定** | 26d? | 2008-02-08 A | 2008-03-14 | 1% | 25.64d? | 74d |  |  |  | 2888h | 72h |
| 34 | 19.1 | **ランチャー** | 26d? | 2008-02-08 A | 2008-03-14 | 1% | 25.84d? | 74d |  |  |  | 2832h | 24h |
| 35 | 19.1.1 | アプリのNintendoロゴ表示 | 16d? | 2008-02-08 | 2008-02-29 |  |  | 84d |  | start no earlier than 2008-02-08 | 松島愛佑; 三田健太朗; 知財部 | 384h |  |
| 36 | 19.1.2 | **EURA表示** | 26d? | 2008-02-08 | 2008-03-14 |  |  | 74d |  |  |  | 1008h |  |
| 37 | 19.1.2.1 | NCL Fix | 16d? | 2008-02-08 | 2008-02-29 |  |  | 84d |  | start no earlier than 2008-02-08 | 三田健太朗; 総務部; 松島愛佑 | 384h |  |
| 38 | 19.1.2.2 | NOA, NOE Fix | 26d? | 2008-02-08 | 2008-03-14 |  |  | 74d |  | start no earlier than 2008-02-08 | 三田健太朗; 総務部; 松島愛佑 | 624h |  |
| 39 | 19.1.3 | **本体設定データ** | 16d? | 2008-02-08 | 2008-02-29 |  |  | 84d |  |  |  | 384h |  |
| 40 | 19.1.3.1 | ペアレンタルコントロール（レーティング以外のデータ構造） | 16d? | 2008-02-08 | 2008-02-29 |  |  | 84d |  | start no earlier than 2008-02-08 | 松島愛佑; 総務部 | 256h |  |
| 41 | 19.1.3.2 | 顔写真 | 16d? | 2008-02-08 | 2008-02-29 |  |  | 84d |  | start no earlier than 2008-02-08 | 松島愛佑 | 128h |  |
| 42 | 19.1.4 | **NANDファイルアクセス制限** | 16d? | 2008-02-08 | 2008-02-29 |  |  | 84d |  |  |  |  |  |
| 43 | 19.1.4.1 | 同一メーカの他タイトルのセーブデータ（ReadOnly） | 16d? | 2008-02-08 | 2008-02-29 |  |  | 84d |  | finish no earlier than 2008-02-29 |  |  |  |
| 44 | 19.1.4.2 | TMPブートをする際のTMPフォルダ（Write） | 11d? | 2008-02-08 | 2008-02-22 |  |  | 89d |  | start no earlier than 2008-02-08 |  |  |  |
| 45 | 19.1.4.3 | フォントの共有コンテンツ化（ReadOnly） | 11d? | 2008-02-08 | 2008-02-22 |  |  | 89d |  | start no earlier than 2008-02-08 |  |  |  |
| 46 | 19.1.4.4 | ESライブラリのほぼ全部アクセス | 11d? | 2008-02-08 | 2008-02-22 |  |  | 89d |  | start no earlier than 2008-02-08 |  |  |  |
| 47 | 19.1.4.5 | 本体設定データ（ReadOnly） | 11d? | 2008-02-08 | 2008-02-22 |  |  | 89d |  | start no earlier than 2008-02-08 |  |  |  |
| 48 | 19.1.5 | **SDに作成するフォルダ名** | 11d? | 2008-02-08 A | 2008-02-22 | 4% | 10.52d? | 89d |  |  |  | 272h | 8h |
| 49 | 19.1.5.1 | TWL正式名称を使えるかを確認 | 11d? | 2008-02-08 | 2008-02-22 |  |  | 89d |  | start no earlier than 2008-02-08 | 三田健太朗 | 88h |  |
| 50 | 19.1.5.2 | パス名調査 | 1d? | 2008-02-08 A | 2008-02-08 A | 100% |  |  |  |  | 白井達広 | 8h | 8h |
| 51 | 19.1.5.3 | TWLでのフォルダ構成のたたき台 | 11d? | 2008-02-08 | 2008-02-22 |  |  | 89d |  | start no earlier than 2008-02-08 | 三田健太朗; 吉岡照幸 | 176h |  |
| 52 | 19.1.6 | **NTRアプリのR4対策** | 16d? | 2008-02-08 | 2008-02-29 |  |  | 84d |  |  |  |  |  |
| 53 | 19.1.6.1 | どのレベルでやるかの方針決定 | 16d? | 2008-02-08 | 2008-02-29 |  |  | 84d |  | start no earlier than 2008-02-08 |  |  |  |
| 54 | 19.1.7 | **アプリジャンプの取捨選択** | 26d? | 2008-02-08 | 2008-03-14 |  |  | 54d |  |  |  |  |  |
| 55 | 19.1.7.1 | ファイル関連付けアプリ起動をやるかやらないか？ | 26d? | 2008-02-08 | 2008-03-14 |  |  | 54d | 0d | finish no earlier than 2008-03-14 |  |  |  |
| 56 | 19.1.8 | **バナー仕様** | 0.33d? | 2008-02-08 A | 2008-02-08 A | 100% |  |  |  |  |  | 16h | 16h |
| 57 | 19.1.8.1 | サブバナー | 0.33d? | 2008-02-08 A | 2008-02-08 A | 100% |  |  |  |  | 吉岡照幸; 川瀬 智広; 荒木 勉 | 8h | 8h |
| 58 | 19.1.8.2 | TWLバナー | 0.33d? | 2008-02-08 A | 2008-02-08 A | 100% |  |  |  |  | 吉岡照幸; 川瀬 智広; 荒木 勉 | 8h | 8h |

| ID | WBS | Task | Duration | Start | Finish | Complete | Remaining | Total slack | Free slack | Constraint | Resources | Work | Actual work |
| --- | --- | --- | --- | --- | --- | --- | --- | --- | --- | --- | --- | --- | --- |
| 59 | 19.1.9 | **バックライト輝度の値、段階** | 16d? | 2008-02-08 | 2008-02-29 |  |  | 84d |  |  |  | 384h |  |
| 60 | 19.1.9.1 | 上限、下限決定 | 16d? | 2008-02-08 | 2008-02-29 |  |  | 84d |  | start no earlier than 2008-02-08 | 斉藤潤一; 喜友名毅 | 256h |  |
| 61 | 19.1.9.2 | 段階数、各輝度レベル決定 | 16d? | 2008-02-08 | 2008-02-29 |  |  | 84d |  | finish no earlier than 2008-02-29 | 桑原雅人 | 128h |  |
| 62 | 19.1.10 | バッテリエクステンション | 16d? | 2008-02-08 | 2008-02-29 |  |  | 79d | 0d | start no earlier than 2008-02-08 | 桑原雅人; 藤田僚平; 村上豊 | 384h |  |
| 63 | 19.2 | **無線** | 1d? | 2008-02-08 A | 2008-02-08 | 86% | 0.14d? | 99d |  |  |  | 56h | 48h |
| 64 | 19.2.1 | WiFiエミュレーション | 0.33d? | 2008-02-08 | 2008-02-08 |  |  | 99.67d |  |  | 大江徹; 佐藤雅樹; 水口裕基 | 8h |  |
| 65 | 19.2.2 | ファームロード | 1d? | 2008-02-08 A | 2008-02-08 A | 100% |  |  |  |  | 大江徹; 佐藤雅樹; 水口裕基 | 24h | 24h |
| 66 | 19.2.3 | 無線終端処理 | 1d? | 2008-02-08 A | 2008-02-08 A | 100% |  |  |  |  | 大江徹; 佐藤雅樹; 水口裕基 | 24h | 24h |
| 68 | 20 | **X3ボード対応** | 7d? | 2008-02-08 A | 2008-02-18 | 30% | 4.9d? | 93d |  |  |  | 112h | 33.6h |
| 69 | 20.1 | ランチャー | 7d? | 2008-02-08 A | 2008-02-18 | 30% | 4.9d? | 93d |  | finish no earlier than 2008-02-18 | 中島高伸 | 56h | 16.8h |
| 70 | 20.2 | ISデバッガ | 7d? | 2008-02-08 A | 2008-02-18 | 30% | 4.9d? | 93d |  | finish no earlier than 2008-02-18 | 中島高伸 | 56h | 16.8h |
| 72 | 21 | **REDシステムメニュー** | 59d? | 2008-02-08 A | 2008-04-30 | 13% | 51.23d? | 41d |  |  |  | 3632h | 477.22h |
| 73 | 21.1 | **ランチャー** | 59d? | 2008-02-08 A | 2008-04-30 | 13% | 51.16d? | 41d |  |  |  | 3600h | 477.22h |
| 74 | 21.1.1 | ランチャー用ARM7コンポーネント | 26d? | 2008-02-08 | 2008-03-14 |  |  | 74d |  | start no earlier than 2008-02-08 | 吉岡照幸 | 208h |  |
| 75 | 21.1.2 | **アプリ起動** | 20d? | 2008-02-08 A | 2008-03-06 | 23% | 15.47d? | 80d |  |  |  | 536h | 124h |
| 76 | 21.1.2.1 | **起動時処理** | 19d? | 2008-02-08 A | 2008-03-05 | 16% | 16.02d? | 81d |  |  |  | 200h | 32h |
| 77 | 21.1.2.1.1 | 鍵の引渡し | 1d? | 2008-02-08 | 2008-02-08 |  |  | 99d |  |  |  |  |  |
| 78 | 21.1.2.1.2 | NANDファイルのアクセス制限 | 1d? | 2008-02-08 A | 2008-02-08 | 50% | 0.5d? | 99d |  |  | 吉岡照幸 | 8h | 4h |
| 79 | 21.1.2.1.3 | カード電源状態 | 1d? | 2008-02-08 | 2008-02-08 |  |  | 99d |  |  | 赤羽淳平 | 8h |  |
| 80 | 21.1.2.1.4 | カード活線挿抜可否 | 1d? | 2008-02-08 | 2008-02-08 |  |  | 99d |  |  | 中島高伸 | 8h |  |
| 81 | 21.1.2.1.5 | SDカードアクセス可否 | 1d? | 2008-02-08 A | 2008-02-08 | 50% | 0.5d? | 99d |  |  | 中島高伸 | 8h | 4h |
| 82 | 21.1.2.1.6 | Codecモード切替 | 1d? | 2008-02-08 A | 2008-02-08 A | 100% |  |  |  |  | 中島高伸 | 8h | 8h |
| 83 | 21.1.2.1.7 | SCFGレジスタロック（ユーザーアプリは必ず） | 1d? | 2008-02-08 A | 2008-02-08 A | 100% |  |  |  |  | 中島高伸 | 8h | 8h |
| 84 | 21.1.2.1.8 | アプリ再配置 | 1d? | 2008-02-08 A | 2008-02-08 A | 100% |  |  |  |  | 吉田光寿 | 8h | 8h |
| 85 | 21.1.2.1.9 | メモリクリア | 0.5d? | 2008-02-08 | 2008-02-08 |  |  | 99d | 18.5d |  | 中島高伸; 吉田光寿 | 8h |  |

| ID | WBS | Task | Duration | Start | Finish | Predecessors | Complete | Remaining | Total slack | Free slack | Constraint | Resources | Work | Actual work |
| --- | --- | --- | --- | --- | --- | --- | --- | --- | --- | --- | --- | --- | --- | --- |
| 86 | 21.1.2.1.10 | **レジスタクリア** | 19d? | 2008-02-08 | 2008-03-05 |  |  |  | 80.5d | 0d |  |  | 136h |  |
| 87 | 21.1.2.1.10.1 | 各ハード担当者にクリアする領域を洗い出してもらう | 16d? | 2008-02-08 | 2008-02-29 |  |  |  | 82.5d | 2d | start no earlier than 2008-02-08 | 吉岡照幸 | 128h |  |
| 88 | 21.1.2.1.10.2 | クリア処理実装 | 1d? | 2008-03-05 | 2008-03-05 | 87 |  |  | 80.5d |  | finish no earlier than 2008-03-05 | 中島高伸 | 8h |  |
| 89 | 21.1.2.2 | **起動チェック** | 1d? | 2008-02-08 | 2008-02-08 |  |  |  | 99d |  |  |  | 8h |  |
| 90 | 21.1.2.2.1 | **AGBカートリッジが必要なソフトは起動禁止** | 1d? | 2008-02-08 | 2008-02-08 |  |  |  | 99d |  |  |  | 8h |  |
| 91 | 21.1.2.2.1.1 | 該当ソフト調査 | 1d? | 2008-02-08 | 2008-02-08 |  |  |  | 99d |  |  | 三田健太朗 | 8h |  |
| 92 | 21.1.2.2.1.2 | チェックルーチン | 1d? | 2008-02-08 | 2008-02-08 |  |  |  | 99d |  |  |  |  |  |
| 93 | 21.1.2.3 | **アプリ認証処理** | 11d? | 2008-02-08 A | 2008-02-22 |  | 46% | 5.96d? | 89d |  |  |  | 192h | 88h |
| 94 | 21.1.2.3.1 | **NTRアプリのR4対策** | 1d? | 2008-02-08 | 2008-02-08 |  |  |  | 99d |  |  |  | 16h |  |
| 95 | 21.1.2.3.1.1 | **ダイジェストとるやつ** | 1d? | 2008-02-08 | 2008-02-08 |  |  |  | 99d |  |  |  | 16h |  |
| 96 | 21.1.2.3.1.1.1 | TWL側実装 | 1d? | 2008-02-08 | 2008-02-08 |  |  |  | 99d |  |  | 村上豊 | 8h |  |
| 97 | 21.1.2.3.1.1.2 | ダイジェストリスト作成 | 1d? | 2008-02-08 | 2008-02-08 |  |  |  | 99d |  |  | 村上豊 | 8h |  |
| 98 | 21.1.2.3.2 | **TWLアプリ** | 11d? | 2008-02-08 A | 2008-02-22 |  | 50% | 5.5d? | 89d |  |  |  | 176h | 88h |
| 99 | 21.1.2.3.2.1 | カードアプリ | 11d? | 2008-02-08 A | 2008-02-22 |  | 50% | 5.5d? | 89d |  | finish no earlier than 2008-02-22 | 吉田光寿 | 88h | 44h |
| 100 | 21.1.2.3.2.2 | NANDアプリ | 11d? | 2008-02-08 A | 2008-02-22 |  | 50% | 5.5d? | 89d |  | finish no earlier than 2008-02-22 | 吉田光寿 | 88h | 44h |
| 101 | 21.1.2.4 | **NTRアプリ起動** | 20d? | 2008-02-08 A | 2008-03-06 |  | 3% | 19.41d? | 80d |  |  |  | 136h | 4h |
| 102 | 21.1.2.4.1 | NTRモード切替 | 1d? | 2008-03-06 A | 2008-03-06 | 85, 86 | 50% | 0.5d? | 80d |  |  | 中島高伸 | 8h | 4h |
| 103 | 21.1.2.4.2 | NTR無線パッチ | 16d? | 2008-02-08 | 2008-02-29 |  |  |  | 84d |  | start no earlier than 2008-02-08 | 中島高伸 | 128h |  |
| 104 | 21.1.3 | **アプリジャンプ** | 46d? | 2008-02-08 A | 2008-04-11 |  | 15% | 39.1d? | 54d |  |  |  | 32h | 28.8h |
| 105 | 21.1.3.1 | **任意アプリの直接起動** | 1d? | 2008-02-08 A | 2008-02-08 |  | 87% | 0.13d? | 99d |  |  |  | 24h | 20.8h |
| 106 | 21.1.3.1.1 | 未ロード状態のアプリ起動 | 1d? | 2008-02-08 A | 2008-02-08 A |  | 100% |  |  |  |  | 吉田光寿 | 8h | 8h |
| 107 | 21.1.3.1.2 | メモリ上にロードされた状態のアプリ起動 | 1d? | 2008-02-08 A | 2008-02-08 |  | 80% | 0.2d? | 99d |  |  | 吉田光寿 | 8h | 6.4h |
| 108 | 21.1.3.1.3 | NANDのTMPフォルダに一時格納された状態のアプリ起動 | 1d? | 2008-02-08 A | 2008-02-08 |  | 80% | 0.2d? | 99d |  |  | 吉田光寿 | 8h | 6.4h |
| 109 | 21.1.3.2 | ランチャーメニューに戻る | 1d? | 2008-02-08 A | 2008-02-08 A |  | 100% |  |  |  |  | 吉田光寿 | 8h | 8h |
| 110 | 21.1.3.3 | ファイル関連付けアプリ起動 | 20d | 2008-03-17 | 2008-04-11 | 55 |  |  | 54d |  |  |  |  |  |
| 111 | 21.1.4 | Hot/Coldスタート判定 | 0.5d? | 2008-02-08 A | 2008-02-08 |  | 80% | 0.1d? | 99.5d |  |  | 中島高伸; 吉田光寿 | 8h | 6.4h |
| 112 | 21.1.5 | TMPフォルダクリーン | 1d? | 2008-02-08 A | 2008-02-08 |  | 50% | 0.5d? | 99d |  |  | 吉田光寿 | 8h | 4h |
| 113 | 21.1.6 | 本体設定データetcのロード | 1d? | 2008-02-08 A | 2008-02-08 |  | 80% | 0.2d? | 99d |  |  | 吉岡照幸 | 8h | 6.4h |
| 114 | 21.1.7 | RTC初期化 | 1d? | 2008-02-08 A | 2008-02-08 |  | 80% | 0.2d? | 99d |  |  | 吉岡照幸 | 8h | 6.4h |
| 115 | 21.1.8 | 初回バックライトON | 1d? | 2008-02-08 | 2008-02-08 |  |  |  | 99d |  |  | 吉岡照幸 | 8h |  |

| ID | WBS | Task | Duration | Start | Finish | Predecessors | Complete | Remaining | Total slack | Free slack | Constraint | Resources | Work | Actual work |
| --- | --- | --- | --- | --- | --- | --- | --- | --- | --- | --- | --- | --- | --- | --- |
| 116 | 21.1.9 | **無線** | 26d? | 2008-02-08 A | 2008-03-14 |  | 3% | 25.33d? | 74d |  |  |  | 312h | 8h |
| 117 | 21.1.9.1 | **新無線ファームロード** | 26d? | 2008-02-08 A | 2008-03-14 |  | 3% | 25.28d? | 74d |  |  |  | 288h | 8h |
| 118 | 21.1.9.1.1 | ダミーROMヘッダ作成ツール | 1d? | 2008-02-08 A | 2008-02-08 A |  | 100% |  |  |  |  | 宮本昌幸 | 8h | 8h |
| 119 | 21.1.9.1.2 | **ファーム** | 12d? | 2008-02-08 | 2008-02-25 |  |  |  | 88d |  |  |  | 96h |  |
| 120 | 21.1.9.1.2.1 | ファーム作成 | 12d? | 2008-02-08 | 2008-02-25 |  |  |  | 88d |  | finish no earlier than 2008-02-25 | Atheros | 96h |  |
| 121 | 21.1.9.1.3 | **実装** | 26d? | 2008-02-08 | 2008-03-14 |  |  |  | 74d |  |  |  | 184h |  |
| 122 | 21.1.9.1.3.1 | 無線ライブラリ | 12d? | 2008-02-08 | 2008-02-25 |  |  |  | 88d |  | start no earlier than 2008-02-08 | 佐藤雅樹 | 96h |  |
| 123 | 21.1.9.1.3.2 | ランチャー仮実装 | 6d? | 2008-02-08 | 2008-02-15 |  |  |  | 94d |  | start no earlier than 2008-02-08 | 宮本昌幸 | 48h |  |
| 124 | 21.1.9.1.3.3 | ランチャー本実装 | 5d? | 2008-03-10 | 2008-03-14 | 179 |  |  | 74d |  | start no earlier than 2008-03-10 | 宮本昌幸 | 40h |  |
| 125 | 21.1.9.2 | **WiFiエミュレーション** | 1d? | 2008-02-08 | 2008-02-08 |  |  |  | 99d |  |  |  | 16h |  |
| 126 | 21.1.9.2.1 | コンポーネント作成 | 1d? | 2008-02-08 | 2008-02-08 |  |  |  | 99d |  |  | 水口裕基 | 8h |  |
| 127 | 21.1.9.2.2 | ロード処理 | 1d? | 2008-02-08 | 2008-02-08 |  |  |  | 99d |  |  | 水口裕基 | 8h |  |
| 128 | 21.1.9.3 | 無線終端処理 | 1d? | 2008-02-08 | 2008-02-08 |  |  |  | 99d |  |  | 佐藤雅樹 | 8h |  |
| 129 | 21.1.10 | アプリリスト取得 | 1d? | 2008-02-08 A | 2008-02-08 |  | 70% | 0.3d? | 99d |  |  | 吉田光寿 | 8h | 5.6h |
| 130 | 21.1.11 | **バナー** | 1d? | 2008-02-08 A | 2008-02-08 |  | 90% | 0.1d? | 99d |  |  |  | 16h | 14.4h |
| 131 | 21.1.11.1 | バナードライバ | 1d? | 2008-02-08 A | 2008-02-08 |  | 90% | 0.1d? | 99d |  |  | 吉田光寿 | 8h | 7.2h |
| 132 | 21.1.11.2 | サブバナーファイル（FSレイヤ） | 0.5d? | 2008-02-08 A | 2008-02-08 |  | 90% | 0.05d? | 99.5d |  |  | 畠本 稔; 吉崎 浩二 | 8h | 7.2h |
| 133 | 21.1.12 | **活線挿抜** | 16d? | 2008-02-08 A | 2008-02-29 |  | 19% | 12.9d? | 74d |  |  |  | 1536h | 273.22h |
| 134 | 21.1.12.1 | **活線挿抜アルゴリズムをFIX** | 16d? | 2008-02-08 A | 2008-02-29 |  | 1% | 15.82d? | 74d | 0d |  |  | 256h | 2.82h |
| 135 | 21.1.12.1.1 | コードの整理 | 16d? | 2008-02-08 | 2008-02-29 |  |  |  | 74d |  | start no earlier than 2008-02-08 | 赤羽淳平 | 128h |  |
| 136 | 21.1.12.1.2 | 挿抜負荷耐性 | 16d? | 2008-02-08 A | 2008-02-29 |  | 2% | 15.65d? | 74d |  | finish no earlier than 2008-02-29 | 赤羽淳平 | 128h | 2.82h |
| 137 | 21.1.12.2 | **ロード** | 16d? | 2008-02-08 A | 2008-02-29 |  | 23% | 12.24d? | 74d | 0d |  |  | 1280h | 270.4h |
| 138 | 21.1.12.2.1 | NTRカード対応 | 16d? | 2008-02-08 A | 2008-02-29 A |  | 100% |  |  |  |  | 赤羽淳平 | 128h | 128h |
| 139 | 21.1.12.2.2 | TWLカード対応 | 16d? | 2008-02-08 A | 2008-02-29 |  | 1% | 15.9d? | 74d |  | finish no earlier than 2008-02-29 | 赤羽淳平 | 128h | 0.8h |
| 140 | 21.1.12.2.3 | カードType1,Type2対応 | 16d? | 2008-02-08 A | 2008-02-29 |  | 5% | 15.2d? | 74d |  | finish no earlier than 2008-02-29 | 赤羽淳平 | 128h | 6.4h |

| ID | WBS | Task | Duration | Start | Finish | Predecessors | Complete | Remaining | Total slack | Free slack | Constraint | Resources | Work | Actual work |
| --- | --- | --- | --- | --- | --- | --- | --- | --- | --- | --- | --- | --- | --- | --- |
| 141 | 21.1.12.2.4 | **Blowfishデコード** | 16d? | 2008-02-08 A | 2008-02-29 |  | 53% | 7.55d? | 74d |  |  |  | 256h | 135.2h |
| 142 | 21.1.12.2.4.1 | SRLの先頭2KB | 16d? | 2008-02-08 A | 2008-02-29 A |  | 100% |  |  |  |  | 赤羽淳平 | 128h | 128h |
| 143 | 21.1.12.2.4.2 | カードのコマンド処理 | 16d? | 2008-02-08 A | 2008-02-29 |  | 6% | 15.1d? | 74d |  | finish no earlier than 2008-02-29 | 赤羽淳平 | 128h | 7.2h |
| 144 | 21.1.12.2.5 | **カードスロットAでの動作** | 16d? | 2008-02-08 | 2008-02-29 |  |  |  | 74d |  |  |  | 128h |  |
| 145 | 21.1.12.2.5.1 | SDKコードとのカードアクセス排他制御 | 16d? | 2008-02-08 | 2008-02-29 |  |  |  | 74d |  | start no earlier than 2008-02-08 | 赤羽淳平 | 128h |  |
| 146 | 21.1.12.2.6 | Blowfish鍵の受け渡し | 16d? | 2008-02-08 | 2008-02-29 |  |  |  | 74d |  | start no earlier than 2008-02-08 | 中島高伸; 赤羽淳平 | 256h |  |
| 147 | 21.1.12.2.7 | 表示との連動 | 16d? | 2008-02-08 | 2008-02-29 |  |  |  | 74d |  | start no earlier than 2008-02-08 | 赤羽淳平 | 128h |  |
| 148 | 21.1.12.2.8 | 起動との連動 | 16d? | 2008-02-08 | 2008-02-29 |  |  |  | 74d |  | start no earlier than 2008-02-08 | 赤羽淳平 | 128h |  |
| 149 | 21.1.13 | ARM9/ARM7対応 | 5d | 2008-03-03 | 2008-03-07 | 134, 137 |  |  | 79d |  | finish no earlier than 2008-02-29 | 赤羽淳平 | 40h |  |
| 150 | 21.1.14 | 速度チューニング | 10d | 2008-03-03 | 2008-03-14 | 134, 137 |  |  | 74d |  | finish no earlier than 2008-02-29 | 赤羽淳平 | 80h |  |
| 151 | 21.1.15 | **ホットスポットサーチ** | 13d? | 2008-02-08 | 2008-02-26 |  |  |  | 87d |  |  |  | 88h |  |
| 152 | 21.1.15.1 | ライブラリ作成 | 11d? | 2008-02-08 | 2008-02-22 |  |  |  | 87d | 0d | start no earlier than 2008-02-08 | ネットワーク開発部 | 88h |  |
| 153 | 21.1.15.2 | ランチャーへの組み込み | 2d | 2008-02-25 | 2008-02-26 | 152 |  |  | 87d |  |  |  |  |  |
| 154 | 21.1.16 | バッテリエクステンション | 5d | 2008-03-03 | 2008-03-07 | 62 |  |  | 79d |  | finish no earlier than 2008-02-29 | 村上豊 | 40h |  |
| 155 | 21.1.17 | **ISデバッガ対応** | 59d? | 2008-02-08 | 2008-04-30 |  |  |  | 41d |  |  |  | 664h |  |
| 156 | 21.1.17.1 | 開発サポート | 1d? | 2008-04-30 | 2008-04-30 | 7FF |  |  | 41d |  | finish no earlier than 2008-03-13 | 中島高伸 | 8h |  |
| 157 | 21.1.17.2 | 安定度を上げる | 16d? | 2008-02-08 | 2008-02-29 |  |  |  | 84d |  | start no earlier than 2008-02-08 | 中島高伸 | 128h |  |
| 158 | 21.1.17.3 | NTRモードデバッグ | 26d? | 2008-02-08 | 2008-03-14 |  |  |  | 74d |  | start no earlier than 2008-02-08 | 中島高伸 | 208h |  |
| 159 | 21.1.17.4 | **NANDアプリデバッグ** | 20d? | 2008-03-03 | 2008-03-28 |  |  |  | 64d |  |  |  | 320h |  |
| 160 | 21.1.17.4.1 | 暫定対応 | 10d? | 2008-03-03 | 2008-03-14 |  |  |  | 64d | 0d | start no earlier than 2008-03-03 | 中島高伸; 吉岡照幸 | 160h |  |
| 161 | 21.1.17.4.2 | 本対応 | 10d | 2008-03-17 | 2008-03-28 | 160 |  |  | 64d |  |  | 中島高伸; 吉岡照幸 | 160h |  |
| 162 | 21.1.17.5 | ハードウェアリセット対応 | 6d | 2008-04-04 | 2008-04-14 | 7SF |  |  | 54d |  | finish no earlier than 2008-02-29 |  |  |  |
| 163 | 21.2 | WiFi設定 | 1d? | 2008-02-08 | 2008-02-08 |  |  |  | 99d |  |  |  |  |  |
| 164 | 21.3 | **本体設定** | 1d? | 2008-02-08 | 2008-02-08 |  |  |  | 99d |  |  | 吉田光寿; 吉岡照幸 | 32h |  |
| 165 | 21.3.1 | ネットワークアップデート | 1d? | 2008-02-08 | 2008-02-08 |  |  |  | 99d |  |  |  |  |  |

| ID | WBS | Task | Duration | Start | Finish | Complete | Remaining | Total slack | Free slack | Resources | Work | Actual work |
| --- | --- | --- | --- | --- | --- | --- | --- | --- | --- | --- | --- | --- |
| 166 | 21.3.2 | **本体初期化** | 1d? | 2008-02-08 | 2008-02-08 |  |  | 99d |  |  | 16h |  |
| 167 | 21.3.2.1 | ツール | 1d? | 2008-02-08 | 2008-02-08 |  |  | 99d |  | 神川洋司 | 8h |  |
| 168 | 21.3.2.2 | ライブラリ | 1d? | 2008-02-08 | 2008-02-08 |  |  | 99d |  | 神川洋司 | 8h |  |
| 170 | 22 | **SDK** | 1d? | 2008-02-08 A | 2008-02-08 | 2% | 0.98d? | 99d |  |  | 168h | 4h |
| 171 | 22.1 | **ツール** | 1d? | 2008-02-08 | 2008-02-08 |  |  | 94d |  |  | 72h |  |
| 172 | 22.1.1 | **makerom** | 1d? | 2008-02-08 | 2008-02-08 |  |  | 99d |  |  | 48h |  |
| 173 | 22.1.1.1 | 領域のワーニング修正 | 1d? | 2008-02-08 | 2008-02-08 |  |  | 99d |  | 吉岡照幸 | 8h |  |
| 174 | 22.1.1.2 | TWL領域用キーテーブル埋め込み | 1d? | 2008-02-08 | 2008-02-08 |  |  | 99d |  | 吉岡照幸 | 8h |  |
| 175 | 22.1.1.3 | NTR署名対応 | 1d? | 2008-02-08 | 2008-02-08 |  |  | 99d |  | 吉岡照幸 | 8h |  |
| 176 | 22.1.1.4 | ペアレンタルコントロール対応 | 1d? | 2008-02-08 | 2008-02-08 |  |  | 99d |  | 吉岡照幸 | 8h |  |
| 177 | 22.1.1.5 | SD使用可能特別版対応 | 1d? | 2008-02-08 | 2008-02-08 |  |  | 99d |  | 吉岡照幸 | 8h |  |
| 178 | 22.1.1.6 | システム/ショップアプリ開発特別版対応 | 1d? | 2008-02-08 | 2008-02-08 |  |  | 99d |  | 吉岡照幸 | 8h |  |
| 179 | 22.1.2 | **maketad** | 1d? | 2008-02-08 | 2008-02-08 |  |  | 94d | 20d |  | 8h |  |
| 180 | 22.1.2.1 | バイナリファイル対応 | 1d? | 2008-02-08 | 2008-02-08 |  |  | 94d |  | 大島 洋一 | 8h |  |
| 181 | 22.1.2.2 | 共有コンテンツ対応 | 1d? | 2008-02-08 | 2008-02-08 |  |  | 94d |  |  |  |  |
| 182 | 22.1.3 | **makebanner** | 1d? | 2008-02-08 | 2008-02-08 |  |  | 99d |  |  | 8h |  |
| 183 | 22.1.3.1 | NTRアイコンIN→TWLバナーOUT対応 | 1d? | 2008-02-08 | 2008-02-08 |  |  | 99d |  | 吉岡照幸 | 8h |  |
| 184 | 22.1.4 | bannercvtr | 1d? | 2008-02-08 | 2008-02-08 |  |  | 99d |  | 遠藤高志 | 8h |  |
| 185 | 22.2 | **ライブラリ** | 1d? | 2008-02-08 A | 2008-02-08 | 5% | 0.95d? | 99d |  |  | 96h | 4h |
| 186 | 22.2.1 | reboot | 1d? | 2008-02-08 A | 2008-02-08 | 50% | 0.5d? | 99d |  | 中島高伸 | 8h | 4h |
| 187 | 22.2.2 | os/launcherParam | 1d? | 2008-02-08 | 2008-02-08 |  |  | 99d |  | 吉田光寿 | 8h |  |
| 188 | 22.2.3 | lcfg | 1d? | 2008-02-08 | 2008-02-08 |  |  | 99d |  | 吉岡照幸 | 8h |  |
| 189 | 22.2.4 | nam | 1d? | 2008-02-08 | 2008-02-08 |  |  | 99d |  | 畠本 稔 | 8h |  |
| 190 | 22.2.5 | マイコン | 1d? | 2008-02-08 | 2008-02-08 |  |  | 99d |  | 村上豊 | 8h |  |
| 191 | 22.2.6 | カメラ | 1d? | 2008-02-08 | 2008-02-08 |  |  | 99d |  | 村上豊 | 8h |  |
| 192 | 22.2.7 | Codec | 1d? | 2008-02-08 | 2008-02-08 |  |  | 99d |  | 神川洋司 | 8h |  |

| ID | WBS | Task | Duration | Start | Finish | Total slack | Constraint | Resources | Work |
| --- | --- | --- | --- | --- | --- | --- | --- | --- | --- |
| 193 | 22.2.8 | **FS** | 1d? | 2008-02-08 | 2008-02-08 | 99d |  |  | 40h |
| 194 | 22.2.8.1 | 電源OFF,リセット時の終端処理 | 1d? | 2008-02-08 | 2008-02-08 | 99d |  | 白井達広 | 8h |
| 195 | 22.2.8.2 | FSのAES暗号化 | 0.5d? | 2008-02-08 | 2008-02-08 | 99.5d |  | 白井達広; 村上豊 | 8h |
| 196 | 22.2.8.3 | 速度チューニング | 1d? | 2008-02-08 | 2008-02-08 | 99d |  | 吉崎 浩二 | 8h |
| 197 | 22.2.8.4 | SRLのハッシュチェック | 1d? | 2008-02-08 | 2008-02-08 | 99d |  | 吉崎 浩二 | 8h |
| 198 | 22.2.8.5 | NANDアクセス権管理 | 0.33d? | 2008-02-08 | 2008-02-08 | 99.67d |  | 吉崎 浩二; 吉岡照幸; 廣瀬 和樹 | 8h |
| 200 | 23 | TWLカードのTWL領域用キーテーブル生成ツール | 7d? | 2008-03-21 | 2008-03-31 | 63d | finish no earlier than 2008-03-31 | 中島高伸 | 56h |
| 202 | 24 | **eTicket** | 1d? | 2008-02-08 | 2008-02-08 | 99d |  |  | 8h |
| 203 | 24.1 | ESライブラリ | 1d? | 2008-02-08 | 2008-02-08 | 99d |  | BroadOn | 8h |
| 204 | 24.2 | **CLSサーバ** | 1d? | 2008-02-08 | 2008-02-08 | 99d |  |  |  |
| 205 | 24.2.1 | 開発用セットアップ | 1d? | 2008-02-08 | 2008-02-08 | 99d |  |  |  |
| 206 | 24.2.2 | 製品用セットアップ | 1d? | 2008-02-08 | 2008-02-08 | 99d |  |  |  |
| 207 | 24.3 | **ショップサーバ** | 1d? | 2008-02-08 | 2008-02-08 | 99d |  |  |  |
| 208 | 24.3.1 | 開発用セットアップ | 1d? | 2008-02-08 | 2008-02-08 | 99d |  |  |  |
| 209 | 24.3.2 | 製品用セットアップ | 1d? | 2008-02-08 | 2008-02-08 | 99d |  |  |  |
